# Menta 0.3 research

Schedule from GanttProject, 2012-01-16 to 2012-07-12.
Research project to automate the incident handling.

## Calendars

- Project calendar: Mon-Fri working; Sat-Sun off.

## Resources

| Resource | Group |
| --- | --- |
| Max | Architect |
| Alex | Team lead |
| Adel | Developer |
| Bulat | Developer |
| Renat | Developer |
| Artem | Developer |

## Schedule

| ID | WBS | Task | Type | Duration | Start | Finish | Predecessors | Resources |
| --- | --- | --- | --- | --- | --- | --- | --- | --- |
| 1 | 1 | **Analysis** |  | 11d | 2012-01-16 | 2012-01-30 |  |  |
| 2 | 1.1 | Incidents |  | 5d | 2012-01-16 | 2012-01-20 |  | Alex [50%]; Bulat; Adel [50%]; Artem; Renat |
| 3 | 1.2 | Workbook articles |  | 6d | 2012-01-23 | 2012-01-30 | 2 | Alex; Bulat; Adel; Artem; Renat |
| 4 | 2 | **Design Emotion Machine** |  | 38d | 2012-01-23 | 2012-03-14 |  |  |
| 5 | 2.1 | Inbound textual description |  | 1d | 2012-01-23 | 2012-01-23 |  | Alex |
| 6 | 2.2 | Internal knowledge(atom) representations |  | 8d | 2012-01-23 | 2012-02-01 |  | Max |
| 7 | 2.3 | Formalization outbound structures |  | 6d | 2012-02-02 | 2012-02-09 | 6 | Max |
| 8 | 2.4 | Design Solution HowTo-s |  | 16d | 2012-01-24 | 2012-02-14 | 5 | Alex |
| 9 | 2.5 | Design Critics |  | 12d | 2012-02-10 | 2012-02-27 | 7 | Max |
| 10 | 2.6 | Design Selector |  | 12d | 2012-02-15 | 2012-03-01 | 8 | Alex |
| 11 | 2.7 | Design Way2Think |  | 12d | 2012-02-28 | 2012-03-14 | 9 | Max |
| 12 | 3 | Analysis and design | milestone | 0d | 2012-03-15 | 2012-03-15 | 1, 4 | Alex |
| 13 | 4 | **OpenCog prototype** |  | 31d | 2012-01-31 | 2012-03-13 | 1 |  |
| 14 | 4.1 | **CogBuntu** |  | 3d | 2012-01-31 | 2012-02-02 |  |  |
| 15 | 4.1.1 | Red documentation |  | 1d | 2012-01-31 | 2012-01-31 |  | Alex; Bulat; Adel; Artem; Renat |
| 16 | 4.1.2 | Install CogBuntu |  | 2d | 2012-02-01 | 2012-02-02 | 15 | Alex; Bulat; Adel; Artem; Renat |
| 17 | 4.2 | **AtomSpace Analysis** |  | 22d | 2012-02-03 | 2012-03-05 | 14 | Artem |
| 18 | 4.2.1 | Read documentation |  | 2d | 2012-02-03 | 2012-02-06 |  | Artem |
| 19 | 4.2.2 | Test storage using Cookbook |  | 4d | 2012-02-07 | 2012-02-10 | 18 |  |
| 20 | 4.2.3 | Test storage usability for knowledge representation |  | 16d | 2012-02-13 | 2012-03-05 | 19 |  |
| 21 | 4.3 | **Probability Logic Engines analysis** |  | 22d | 2012-02-03 | 2012-03-05 | 14 | Renat |
| 22 | 4.3.1 | **PLN analysis** |  | 6d | 2012-02-03 | 2012-02-10 |  |  |
| 23 | 4.3.1.1 | Read documentation |  | 2d | 2012-02-03 | 2012-02-06 |  |  |
| 24 | 4.3.1.2 | Test PLN using NARS data |  | 4d | 2012-02-07 | 2012-02-10 | 23 |  |
| 25 | 4.3.2 | Bayesian inference |  | 16d | 2012-02-13 | 2012-03-05 | 24 |  |

| ID | WBS | Task | Duration | Start | Finish | Predecessors | Resources |
| --- | --- | --- | --- | --- | --- | --- | --- |
| 26 | 4.4 | **Embodiment** | 28d | 2012-02-03 | 2012-03-13 | 1, 14 | Adel |
| 27 | 4.4.1 | Read documentation | 8d | 2012-02-03 | 2012-02-14 |  |  |
| 28 | 4.4.2 | Test embodiment system to simulate Intellix | 20d | 2012-02-15 | 2012-03-13 | 27 |  |
| 29 | 4.5 | **Natural language processors** | 18d | 2012-02-03 | 2012-02-28 | 14 | Bulat |
| 30 | 4.5.1 | RelEx | 8d | 2012-02-03 | 2012-02-14 |  |  |
| 31 | 4.5.2 | Stanford Parser | 4d | 2012-02-15 | 2012-02-20 | 30 |  |
| 32 | 4.5.3 | OpenNLP | 6d | 2012-02-21 | 2012-02-28 | 31 |  |
| 33 | 5 | **System Training prototype** | 60d | 2012-02-29 | 2012-05-22 | 14 |  |
| 34 | 5.1 | MOSES | 18d | 2012-02-29 | 2012-03-23 | 29 | Bulat |
| 35 | 5.2 | Bayesian network | 16d | 2012-03-06 | 2012-03-27 | 17 | Artem |
| 36 | 5.3 | **Training** | 19d | 2012-03-02 | 2012-03-28 |  |  |
| 37 | 5.3.1 | **Training data structures** | 19d | 2012-03-02 | 2012-03-28 |  |  |
| 38 | 5.3.1.1 | Incident description | 1d | 2012-03-02 | 2012-03-02 | 10 | Alex |
| 39 | 5.3.1.2 | Incident category | 1d | 2012-03-05 | 2012-03-05 | 38 | Alex |
| 40 | 5.3.1.3 | **Incident formalized description** | 10d | 2012-03-15 | 2012-03-28 | 11 | Max |
| 41 | 5.3.1.3.1 | Model | 10d | 2012-03-15 | 2012-03-28 | 11 | Max |
| 42 | 5.3.1.4 | Incident solution(Migrate HowTo approach | 10d | 2012-03-06 | 2012-03-19 | 39 | Alex |
| 43 | 5.4 | **Create formalized description generalisation mechanism** | 38d | 2012-03-06 | 2012-04-26 |  |  |
| 44 | 5.4.1 | **Create common parts selector and variable introducer** | 38d | 2012-03-06 | 2012-04-26 |  |  |
| 45 | 5.4.1.1 | Comparator | 6d | 2012-03-06 | 2012-03-13 | 21 | Renat |
| 46 | 5.4.1.2 | Recursive runner | 8d | 2012-03-14 | 2012-03-23 | 45 | Renat |
| 47 | 5.4.1.3 | **Variable introducer** | 21d | 2012-03-29 | 2012-04-26 |  |  |
| 48 | 5.4.1.3.1 | Design variable structure | 4d | 2012-03-29 | 2012-04-03 | 41 | Max |
| 49 | 5.4.1.3.2 | Implement and test variable | 8d | 2012-04-04 | 2012-04-13 | 48 | Max |
| 50 | 5.4.1.3.3 | Named variables builder | 8d | 2012-04-16 | 2012-04-25 | 49 | Max |
| 51 | 5.4.1.3.4 | Unnamed variables builder | 8d | 2012-04-17 | 2012-04-26 | 62 | Adel |

| ID | WBS | Task | Type | Duration | Start | Finish | Predecessors | Resources |
| --- | --- | --- | --- | --- | --- | --- | --- | --- |
| 52 | 5.5 | **Incident classification algorithm** |  | 16d | 2012-03-14 | 2012-04-04 |  |  |
| 53 | 5.5.1 | **Create test data for KnowledgeBaseAnnotator** |  | 16d | 2012-03-14 | 2012-04-04 |  |  |
| 54 | 5.5.1.1 | Allowed Software list |  | 6d | 2012-03-14 | 2012-03-21 | 26 | Adel |
| 55 | 5.5.1.2 | Over software actions |  | 4d | 2012-03-26 | 2012-03-29 | 34 | Bulat |
| 56 | 5.5.1.3 | Software attributes |  | 8d | 2012-03-26 | 2012-04-04 | 46 | Renat |
| 57 | 5.5.1.4 | Software states |  | 4d | 2012-03-20 | 2012-03-23 | 42 | Alex |
| 58 | 5.6 | **Create validation criteria inference approach** |  | 46d | 2012-03-20 | 2012-05-22 |  |  |
| 59 | 5.6.1 | Analyse validation criteria types |  | 10d | 2012-03-22 | 2012-04-04 | 54 | Adel |
| 60 | 5.6.2 | Create descriptions via predicates (logical operations) |  | 14d | 2012-03-20 | 2012-04-06 | 42 | Alex; Artem |
| 61 | 5.6.3 | **Create validation mechanism possibly via PLN** |  | 12d | 2012-03-30 | 2012-04-16 |  |  |
| 62 | 5.6.3.1 | Design adapter |  | 8d | 2012-04-05 | 2012-04-16 | 59 | Adel |
| 63 | 5.6.3.2 | Implement adapter |  | 12d | 2012-03-30 | 2012-04-16 | 55 | Bulat; Renat |
| 64 | 5.6.4 | **Create Solution generation prototype** |  | 32d | 2012-04-09 | 2012-05-22 |  |  |
| 65 | 5.6.4.1 | HowTo types = 16 - 40 |  | 16d | 2012-04-09 | 2012-04-30 | 60 | Alex |
| 66 | 5.6.4.2 | Solution description language = 32 - 40 |  | 32d | 2012-04-09 | 2012-05-22 | 60 | Artem |
| 67 | 5.6.4.3 | Create 10 Solution descriptions = 16 - 32 |  | 16d | 2012-04-17 | 2012-05-08 | 63 | Bulat |
| 68 | 5.6.4.4 | **Train Solutions** |  | 23d | 2012-04-17 | 2012-05-17 |  |  |
| 69 | 5.6.4.4.1 | Analyse machine learning algorithms (C 4.5, Bayes network) = 16 - 24 |  | 16d | 2012-04-17 | 2012-05-08 | 63 | Renat |
| 70 | 5.6.4.4.2 | Train 10 Solutions (in: formalised problem description, out Solution) = 16 - 24 |  | 16d | 2012-04-26 | 2012-05-17 | 50 | Max |
| 71 | 6 | Training prototype milestone | milestone | 0d | 2012-05-23 | 2012-05-23 | 33 |  |
| 72 | 7 | **Emotion Machine Soltion** |  | 36d | 2012-05-24 | 2012-07-12 | 71 |  |
| 73 | 7.1 | **Prototype Critics, Way2Think, Selector** |  | 14d | 2012-05-24 | 2012-06-12 |  |  |
| 74 | 7.1.1 | **Implement Critics** |  | 14d | 2012-05-24 | 2012-06-12 |  |  |
| 75 | 7.1.1.1 | **Deliberative Critics** |  | 8d | 2012-05-24 | 2012-06-04 |  |  |
| 76 | 7.1.1.1.1 | Current activity goal representation = 6 - 8 [possibly should try several approaches] |  | 6d | 2012-05-24 | 2012-05-31 |  | Max |
| 77 | 7.1.1.1.2 | Current task state representation = 4 - 6 [possibly should try several representations] |  | 4d | 2012-05-24 | 2012-05-29 |  | Alex |
| 78 | 7.1.1.1.3 | Reasoning over current state with Reasoner adapter development = 8 - 10 |  | 8d | 2012-05-24 | 2012-06-04 |  | Adel |

| ID | WBS | Task | Duration | Start | Finish | Predecessors | Resources |
| --- | --- | --- | --- | --- | --- | --- | --- |
| 79 | 7.1.1.2 | **Reflective Critic** | 6d | 2012-05-24 | 2012-05-31 |  |  |
| 80 | 7.1.1.2.1 | **Develop Energy control mechanism.** | 6d | 2012-05-24 | 2012-05-31 |  |  |
| 81 | 7.1.1.2.1.1 | Design Energy concept = 4 | 4d | 2012-05-24 | 2012-05-29 |  | Artem |
| 82 | 7.1.1.2.1.2 | Design Energy assignment mechanism during training = 2 | 2d | 2012-05-24 | 2012-05-25 |  | Bulat |
| 83 | 7.1.1.2.1.3 | Implement Energy concept = 2 | 2d | 2012-05-30 | 2012-05-31 | 81 | Renat |
| 84 | 7.1.1.2.1.4 | Implement Energy assignment mechanism = 4 | 4d | 2012-05-28 | 2012-05-31 | 82 | Bulat |
| 85 | 7.1.1.3 | **Develop Sub-goal control mechanism.** | 8d | 2012-05-30 | 2012-06-08 |  |  |
| 86 | 7.1.1.3.1 | Design sub-goal control mechanism = 4 | 4d | 2012-05-30 | 2012-06-04 | 77 | Alex |
| 87 | 7.1.1.3.2 | Implement sub-goal control mechanism = 4 | 4d | 2012-06-05 | 2012-06-08 | 86 | Alex |
| 88 | 7.1.1.4 | **Develop Evidence control mechanism.** | 8d | 2012-06-01 | 2012-06-12 |  |  |
| 89 | 7.1.1.4.1 | Design Evidence control mechanism = 4 - 10 [no clear understanding of evidence control mechanism, possibly further research required] | 4d | 2012-06-01 | 2012-06-06 | 76 | Max |
| 90 | 7.1.1.4.2 | Implement Evidence control mechanism = 4 - 10 | 4d | 2012-06-07 | 2012-06-12 | 89 | Max |
| 91 | 7.2 | Prototype Selector = 6 - 8 | 6d | 2012-05-30 | 2012-06-06 | 81 | Artem |
| 92 | 7.3 | **Prototype Way2Think** | 30d | 2012-06-01 | 2012-07-12 |  |  |
| 93 | 7.3.1 | Create base constructs(HowTo-s) = 2 - 4 | 2d | 2012-06-01 | 2012-06-04 | 83 | Renat |
| 94 | 7.3.2 | Knowing How (select from KB) = 4 - 8 | 4d | 2012-06-01 | 2012-06-06 | 84 | Bulat |
| 95 | 7.3.3 | Extensive Search (search in KB) = 12 - 24 [graph search could be not strait-forward] | 12d | 2012-06-05 | 2012-06-20 | 93 | Renat |
| 96 | 7.3.4 | Reasoning by Analogy = 32 - 40 [graph analogy API could be not strait forward] | 16d | 2012-06-07 | 2012-06-28 | 91 | Alex; Artem |
| 97 | 7.3.5 | **Divide and Conquer** | 24d | 2012-06-07 | 2012-07-10 |  |  |
| 98 | 7.3.5.1 | **Add analytical HowTo-s to basic set:** | 8d | 2012-06-07 | 2012-06-18 |  |  |
| 99 | 7.3.5.1.1 | Wrong software was installed = 4 | 4d | 2012-06-13 | 2012-06-18 | 90 | Max |
| 100 | 7.3.5.1.2 | Two direct instructions in one incident description = 4 | 4d | 2012-06-07 | 2012-06-12 | 94 | Bulat |
| 101 | 7.3.5.2 | **Add Interpretation mechanism over current state of the system** | 20d | 2012-06-13 | 2012-07-10 |  |  |
| 102 | 7.3.5.2.1 | Variable and current state addressing = 12 - 16 | 12d | 2012-06-13 | 2012-06-28 | 100 | Bulat |
| 103 | 7.3.5.2.2 | Logical operation execution = 16 | 16d | 2012-06-19 | 2012-07-10 | 99 | Max |

| ID | WBS | Task | Duration | Start | Finish | Predecessors | Resources |
| --- | --- | --- | --- | --- | --- | --- | --- |
| 104 | 7.3.6 | **Simulation (build the model based on inbound information) =** | 16d | 2012-06-21 | 2012-07-12 |  |  |
| 105 | 7.3.6.1 | Search for concept in the KB. = 16 | 16d | 2012-06-21 | 2012-07-12 | 95 | Renat |
| 106 | 7.3.6.2 | Search for properties in KB. = 4 | 4d | 2012-06-29 | 2012-07-04 | 96 | Artem |
| 107 | 7.3.6.3 | Create connections of found concepts. = 2 | 2d | 2012-06-29 | 2012-07-02 | 96 | Alex |
| 108 | 7.3.6.4 | Support context. = 2 | 2d | 2012-06-29 | 2012-07-02 | 102 | Bulat |
| 109 | 7.4 | **Test main perceiving workflow** | 5d | 2012-07-03 | 2012-07-09 |  |  |
| 110 | 7.4.1 | Prototype Main Workflow. = 10 - 14 [some not well tested bugs could slow down the development]{Models, Critics, Way2Think ready to use} | 5d | 2012-07-03 | 2012-07-09 | 107, 108 | Alex; Bulat |
